# Year 3 Project Plan 7 30

Schedule from MS Project, 2008-07-14 to 2008-10-08, A marks actual dates.
Persistent Systems Pvt. Ltd.

## Calendars

- Standard: Mon-Fri 08:00-12:00, 13:00-17:00; Sat-Sun off. Exceptions (off unless hours are given): 2008-08-15 (Holiday).

## Resources

| Resource |
| --- |
| Chandrakant Talele |
| Lalit Chand |
| Chetan Patil |
| Atul Jawale |
| Hrishikesh Rajpathak |
| Rushikesh Subhedar |
| Deepak Shingan |

## Schedule

| ID | WBS | Task | Duration | Start | Finish | Predecessors | Complete | Remaining | Total slack | Free slack | Constraint | Resources | Work | Actual work |
| --- | --- | --- | --- | --- | --- | --- | --- | --- | --- | --- | --- | --- | --- | --- |
| 1 | 1 | **Year 3 M1** | 62d? | 2008-07-14 A | 2008-10-08 |  | 72% | 17.22d? | 0d |  |  |  | 1528h | 1144h |
| 2 | 1.1 | **caB2B_Y3_020Technology Stack Migration** | 62d? | 2008-07-14 A | 2008-10-08 |  | 55% | 27.79d? | 0d |  |  |  | 336h | 256h |
| 3 | 1.1.1 | **Migrate to Jboss 4.0.5 GA** | 2d | 2008-07-14 A | 2008-07-15 A |  | 100% |  |  |  |  |  | 16h | 16h |
| 4 | 1.1.1.1 | Changes in existing codebase | 1d | 2008-07-14 A | 2008-07-14 A |  | 100% |  |  |  | start no earlier than 2008-07-14 | Lalit Chand | 8h | 8h |
| 5 | 1.1.1.2 | Changes in deployment process | 1d | 2008-07-15 A | 2008-07-15 A | 4 | 100% |  |  |  |  | Lalit Chand | 8h | 8h |
| 6 | 1.1.2 | **Migrate to EJB 3.0** | 60d | 2008-07-16 A | 2008-10-08 |  | 94% | 3.53d | 0d |  |  |  | 136h | 128h |
| 7 | 1.1.2.1 | Understanding EJB 3.0 | 5d | 2008-07-16 A | 2008-07-22 A | 5 | 100% |  |  |  |  | Lalit Chand | 40h | 40h |
| 8 | 1.1.2.2 | Changes in existing codebase | 3d | 2008-07-23 A | 2008-07-25 A | 7 | 100% |  |  |  |  | Lalit Chand | 24h | 24h |
| 9 | 1.1.2.3 | Changes in deployment process | 1d | 2008-07-28 A | 2008-07-28 A | 8 | 100% |  |  |  |  | Lalit Chand | 8h | 8h |
| 10 | 1.1.2.4 | Testing | 4d | 2008-07-29 A | 2008-08-01 A | 9 | 100% |  |  |  |  | Lalit Chand | 32h | 32h |
| 11 | 1.1.2.5 | Fixing problem | 4d | 2008-08-04 A | 2008-10-08 | 10 | 75% | 1d | 0d |  |  | Lalit Chand | 32h | 24h |
| 12 | 1.1.3 | **Query Module** | 12d | 2008-08-04 A | 2008-08-20 A |  | 100% |  |  |  |  |  | 88h | 88h |
| 13 | 1.1.3.1 | Query Module Release UI | 3d | 2008-08-18 A | 2008-08-20 A | 61 | 100% |  |  |  |  | Deepak Shingan | 24h | 24h |
| 14 | 1.1.3.2 | Query Module Release backend changes | 8d | 2008-08-04 A | 2008-08-20 A | 89 | 100% |  |  |  |  | Chetan Patil | 64h | 64h |
| 15 | 1.1.4 | **Moving to caGrid 1.2** | 5d | 2008-08-25 | 2008-08-29 |  |  |  | 28d |  |  |  | 40h |  |
| 16 | 1.1.4.1 | caB2B Finding & Replacing appropriate jars | 2d | 2008-08-25 | 2008-08-26 |  |  |  | 19d | 0d | start no earlier than 2008-08-25 | Deepak Shingan | 16h |  |
| 17 | 1.1.4.2 | Admin Finding & Replacing appropriate jars | 2d | 2008-08-27 | 2008-08-28 | 16 |  |  | 19d | 0d |  | Deepak Shingan | 16h |  |
| 18 | 1.1.4.3 | Testing | 1d | 2008-08-29 | 2008-08-29 | 17 |  |  | 19d |  |  | Deepak Shingan | 8h |  |
| 19 | 1.1.5 | **New DE release** | 10d | 2008-07-14 | 2008-07-25 |  |  |  | 52d |  |  |  |  |  |
| 20 | 1.1.5.1 | Understand new design and identify changes | 2d | 2008-07-14 | 2008-07-15 |  |  |  | 51d |  |  |  |  |  |
| 21 | 1.1.5.2 | Changs in cab2B and Admin | 10d | 2008-07-14 | 2008-07-25 |  |  |  | 43d |  |  |  |  |  |
| 22 | 1.1.5.3 | Verification | 4d | 2008-07-14 | 2008-07-17 |  |  |  | 49d |  |  |  |  |  |
| 23 | 1.1.6 | **java 1.5** | 31d? | 2008-08-25 A | 2008-10-06 |  | 43% | 17.71d? | 2d |  |  |  | 56h | 24h |
| 24 | 1.1.6.1 | Identify changes for java 1.5 | 1d? | 2008-10-06 | 2008-10-06 | 25 |  |  | 2d |  | start no earlier than 2008-07-10 | Lalit Chand | 8h |  |
| 25 | 1.1.6.2 | Solution for client side java 6 components | 6d | 2008-08-25 A | 2008-10-03 | 100 | 50% | 3d | 2d | 0d |  | Lalit Chand | 48h | 24h |

| ID | WBS | Task | Duration | Start | Finish | Predecessors | Complete | Remaining | Total slack | Free slack | Constraint | Resources | Work | Actual work |
| --- | --- | --- | --- | --- | --- | --- | --- | --- | --- | --- | --- | --- | --- | --- |
| 26 | 1.2 | **caB2B_Y3_001-Automatic cache update between admin and cab2b server** | 9d? | 2008-09-01 A | 2008-09-11 |  | 56% | 4d? | 19d |  |  |  | 64h | 40h |
| 27 | 1.2.1 | Requirement | 1d | 2008-09-01 A | 2008-09-01 A | 68 | 100% |  |  |  |  | Hrishikesh Rajpathak | 8h | 8h |
| 28 | 1.2.2 | **Investigation** | 6d? | 2008-09-02 A | 2008-09-09 | 27 | 67% | 2d? | 19d | 0d |  |  | 48h | 32h |
| 29 | 1.2.2.1 | Investigate Component | 4d | 2008-09-02 A | 2008-09-05 A | 27 | 100% |  |  |  |  | Hrishikesh Rajpathak | 32h | 32h |
| 30 | 1.2.2.2 | Developing Prototype | 1d? | 2008-09-08 | 2008-09-08 | 29 |  |  | 19d | 0d |  | Hrishikesh Rajpathak | 8h |  |
| 31 | 1.2.2.3 | Design | 1d? | 2008-09-09 | 2008-09-09 | 30 |  |  | 19d |  |  | Hrishikesh Rajpathak | 8h |  |
| 32 | 1.2.3 | **Implementation** | 2d? | 2008-09-10 | 2008-09-11 | 28 |  |  | 19d |  |  |  | 8h |  |
| 33 | 1.2.3.1 | Separating out Implementation Deployment Unit | 1d? | 2008-09-10 | 2008-09-10 |  |  |  | 19d | 0d |  | Hrishikesh Rajpathak | 8h |  |
| 34 | 1.2.3.2 | Changes needed in Deployment Process | 1d? | 2008-09-11 | 2008-09-11 | 33 |  |  | 19d |  |  |  |  |  |
| 35 | 1.3 | **caB2B_Y3_005-User to override the URLs** | 16d | 2008-08-13 A | 2008-09-04 A |  | 100% |  |  |  |  |  | 128h | 128h |
| 36 | 1.3.1 | Requirement | 1d | 2008-08-13 A | 2008-08-13 A | 69 | 100% |  |  |  |  | Atul Jawale | 8h | 8h |
| 37 | 1.3.2 | UI mockups | 1d | 2008-08-14 A | 2008-08-14 A | 36 | 100% |  |  |  |  | Atul Jawale | 8h | 8h |
| 38 | 1.3.3 | Design | 1d | 2008-08-18 A | 2008-08-18 A | 37 | 100% |  |  |  |  | Atul Jawale | 8h | 8h |
| 39 | 1.3.4 | **Implementation** | 13d | 2008-08-19 A | 2008-09-04 A | 38 | 100% |  |  |  |  |  | 104h | 104h |
| 40 | 1.3.4.1 | UI implementation | 4d | 2008-08-19 A | 2008-08-22 A |  | 100% |  |  |  |  | Atul Jawale | 32h | 32h |
| 41 | 1.3.4.2 | Backend integration | 4d | 2008-08-25 A | 2008-08-28 A | 40 | 100% |  |  |  |  | Atul Jawale | 32h | 32h |
| 42 | 1.3.4.3 | Unit testing | 3d | 2008-08-29 A | 2008-09-02 A | 41 | 100% |  |  |  |  | Atul Jawale | 24h | 24h |
| 43 | 1.3.4.4 | UE enhanements | 2d | 2008-09-03 A | 2008-09-04 A | 42 | 100% |  |  |  |  | Atul Jawale | 16h | 16h |
| 44 | 1.4 | **caB2B_Y3_006-Home page experiments links functional + show all** | 12d | 2008-07-14 A | 2008-07-29 A |  | 100% |  |  |  |  |  | 96h | 96h |
| 45 | 1.4.1 | Requirement | 1d | 2008-07-14 A | 2008-07-14 A |  | 100% |  |  |  | start no earlier than 2008-07-14 | Deepak Shingan | 8h | 8h |
| 46 | 1.4.2 | UI Mockups | 1d | 2008-07-15 A | 2008-07-15 A | 45 | 100% |  |  |  |  | Deepak Shingan | 8h | 8h |
| 47 | 1.4.3 | Design | 1d | 2008-07-16 A | 2008-07-16 A | 46 | 100% |  |  |  |  | Deepak Shingan | 8h | 8h |
| 48 | 1.4.4 | **Implementation** | 9d | 2008-07-17 A | 2008-07-29 A |  | 100% |  |  |  |  |  | 72h | 72h |
| 49 | 1.4.4.1 | Showing recent experiments | 2d | 2008-07-17 A | 2008-07-18 A | 47 | 100% |  |  |  |  | Deepak Shingan | 16h | 16h |
| 50 | 1.4.4.2 | Making links in stack box funtional | 2d | 2008-07-21 A | 2008-07-22 A | 49 | 100% |  |  |  |  | Deepak Shingan | 16h | 16h |
| 51 | 1.4.4.3 | Show All to display all experiments on right side | 3d | 2008-07-23 A | 2008-07-25 A | 50 | 100% |  |  |  |  | Deepak Shingan | 24h | 24h |
| 52 | 1.4.4.4 | Click on any experiment from show all table to open experiment | 2d | 2008-07-28 A | 2008-07-29 A | 51 | 100% |  |  |  |  | Deepak Shingan | 16h | 16h |

| ID | WBS | Task | Duration | Start | Finish | Predecessors | Complete | Constraint | Resources | Work | Actual work |
| --- | --- | --- | --- | --- | --- | --- | --- | --- | --- | --- | --- |
| 53 | 1.5 | **caB2B_Y3_007-Home page category links functional + show all** | 12d | 2008-07-30 A | 2008-08-14 A |  | 100% |  |  | 96h | 96h |
| 54 | 1.5.1 | Requirement | 1d | 2008-07-30 A | 2008-07-30 A | 44 | 100% |  | Deepak Shingan | 8h | 8h |
| 55 | 1.5.2 | UI Mockups | 1d | 2008-07-31 A | 2008-07-31 A | 54 | 100% |  | Deepak Shingan | 8h | 8h |
| 56 | 1.5.3 | Design | 1d | 2008-08-01 A | 2008-08-01 A | 55 | 100% |  | Deepak Shingan | 8h | 8h |
| 57 | 1.5.4 | **Implementation** | 9d | 2008-08-04 A | 2008-08-14 A |  | 100% |  |  | 72h | 72h |
| 58 | 1.5.4.1 | Showing all categories | 2d | 2008-08-04 A | 2008-08-05 A | 56 | 100% |  | Deepak Shingan | 16h | 16h |
| 59 | 1.5.4.2 | Clicking on category in stack box to open add limit page | 2d | 2008-08-06 A | 2008-08-07 A | 58 | 100% |  | Deepak Shingan | 16h | 16h |
| 60 | 1.5.4.3 | Show All to display all categories on right side | 3d | 2008-08-08 A | 2008-08-12 A | 59 | 100% |  | Deepak Shingan | 24h | 24h |
| 61 | 1.5.4.4 | Click on any category from show all table to open it in add limit page | 2d | 2008-08-13 A | 2008-08-14 A | 60 | 100% |  | Deepak Shingan | 16h | 16h |
| 62 | 1.6 | **caB2B_Y3_008-Popular categories** | 24d | 2008-07-28 A | 2008-08-29 A |  | 100% |  |  | 184h | 184h |
| 63 | 1.6.1 | Requirement | 8d | 2008-07-28 A | 2008-08-06 A |  | 100% | start no earlier than 2008-07-28 | Hrishikesh Rajpathak | 64h | 64h |
| 64 | 1.6.2 | Design | 5d | 2008-08-07 A | 2008-08-14 A | 63 | 100% | finish no earlier than 2008-08-14 | Hrishikesh Rajpathak | 40h | 40h |
| 65 | 1.6.3 | **Implementation** | 10d | 2008-08-18 A | 2008-08-29 A |  | 100% |  |  | 80h | 80h |
| 66 | 1.6.3.1 | Calculating popularity | 3d | 2008-08-18 A | 2008-08-20 A | 64 | 100% |  | Hrishikesh Rajpathak | 24h | 24h |
| 67 | 1.6.3.2 | Storing and using popularity | 4d | 2008-08-21 A | 2008-08-26 A | 66 | 100% | finish no earlier than 2008-08-08 | Hrishikesh Rajpathak | 32h | 32h |
| 68 | 1.6.3.3 | Unit Testing | 3d | 2008-08-27 A | 2008-08-29 A | 67 | 100% |  | Hrishikesh Rajpathak | 24h | 24h |
| 69 | 1.7 | **caB2B_Y3_009-Fixing the current washU services for index service** | 21d | 2008-07-14 A | 2008-08-11 A |  | 100% |  |  | 168h | 168h |
| 70 | 1.7.1 | Learning service, discovery and metadata | 5d | 2008-07-14 A | 2008-07-18 A |  | 100% |  | Atul Jawale | 40h | 40h |
| 71 | 1.7.2 | Finding the cause | 5d | 2008-07-21 A | 2008-07-25 A | 70 | 100% |  | Atul Jawale | 40h | 40h |
| 72 | 1.7.3 | Investigating on fixes / solutions | 5d | 2008-07-28 A | 2008-08-01 A | 71 | 100% |  | Atul Jawale | 40h | 40h |
| 73 | 1.7.4 | Fixing Services | 6d | 2008-08-04 A | 2008-08-11 A | 72 | 100% |  | Atul Jawale | 48h | 48h |
| 74 | 1.8 | **caArray caTissue Integration Bug# 8780** | 6d | 2008-08-27 A | 2008-09-03 A |  | 100% |  |  | 48h | 48h |
| 75 | 1.8.1 | Investigation | 2d | 2008-08-27 A | 2008-08-28 A | 92 | 100% |  | Chetan Patil | 16h | 16h |
| 76 | 1.8.2 | Testing Patch | 2d | 2008-08-29 A | 2008-09-01 A | 75 | 100% |  | Chetan Patil | 16h | 16h |
| 77 | 1.8.3 | Pushing patch into WashU instance | 2d | 2008-09-02 A | 2008-09-03 A | 76 | 100% |  | Chetan Patil | 16h | 16h |

| ID | WBS | Task | Duration | Start | Finish | Predecessors | Complete | Remaining | Total slack | Free slack | Constraint | Resources | Work | Actual work |
| --- | --- | --- | --- | --- | --- | --- | --- | --- | --- | --- | --- | --- | --- | --- |
| 78 | 1.9 | **Exposing CQL’s on the User Interface** | 21d | 2008-08-28 A | 2008-09-25 |  | 29% | 15d | 9d |  |  |  | 168h | 48h |
| 79 | 1.9.1 | Requirement | 1d | 2008-08-28 A | 2008-08-28 A | 100 | 100% |  |  |  |  | Lalit Chand | 8h | 8h |
| 80 | 1.9.2 | Learning CQL | 5d | 2008-08-29 A | 2008-09-04 A | 79 | 100% |  |  |  |  | Lalit Chand | 40h | 40h |
| 81 | 1.9.3 | Understanding existing implementation | 4d | 2008-09-05 | 2008-09-10 | 80 |  |  | 7d | 0d |  | Lalit Chand | 32h |  |
| 82 | 1.9.4 | UI mockups | 1d | 2008-09-11 | 2008-09-11 | 81 |  |  | 7d | 0d |  | Lalit Chand | 8h |  |
| 83 | 1.9.5 | Design | 2d | 2008-09-12 | 2008-09-15 | 82 |  |  | 7d | 0d |  | Lalit Chand | 16h |  |
| 84 | 1.9.6 | **Implementation** | 8d | 2008-09-16 | 2008-09-25 | 83 |  |  | 9d |  |  |  | 64h |  |
| 85 | 1.9.6.1 | UI implementation | 4d | 2008-09-16 | 2008-09-19 |  |  |  | 7d | 0d |  | Lalit Chand | 32h |  |
| 86 | 1.9.6.2 | Backend integration | 4d | 2008-09-22 | 2008-09-25 | 85 |  |  | 7d |  |  | Lalit Chand | 32h |  |
| 87 | 1.10 | Knowledge Transfer from Deepak | 10d | 2008-09-05 | 2008-09-18 |  |  |  | 13d |  | start no earlier than 2008-09-05 | Atul Jawale; Deepak Shingan | 160h |  |
| 88 | 1.11 | **Bugs Fixing** | 27d | 2008-07-31 A | 2008-09-08 A |  | 100% |  |  |  |  |  | 80h | 80h |
| 89 | 1.11.1 | Bug# 8070 | 2d | 2008-07-31 A | 2008-08-01 A | 120 | 100% |  |  |  | start no earlier than 2008-08-04 | Chetan Patil | 16h | 16h |
| 90 | 1.11.2 | caTissue core service instance | 1d | 2008-08-12 A | 2008-08-12 A |  | 100% |  |  |  | start no earlier than 2008-08-08 | Atul Jawale | 8h | 8h |
| 91 | 1.11.3 | Bug 9090 & 9138 fix | 2d | 2008-08-21 A | 2008-08-22 A | 14 | 100% |  |  |  |  | Chetan Patil | 16h | 16h |
| 92 | 1.11.4 | Bug 9221 fix | 2d | 2008-08-25 A | 2008-08-26 A | 91 | 100% |  |  |  |  | Chetan Patil | 16h | 16h |
| 93 | 1.11.5 | Bug # 8911 | 1d | 2008-09-04 A | 2008-09-04 A | 77 | 100% |  |  |  |  | Chetan Patil | 8h | 8h |
| 94 | 1.11.6 | Bug # 8814 | 1d | 2008-09-05 A | 2008-09-05 A | 93 | 100% |  |  |  |  | Chetan Patil | 8h | 8h |
| 95 | 1.11.7 | Bug # 8839 | 1d | 2008-09-08 A | 2008-09-08 A | 94 | 100% |  |  |  |  | Chetan Patil | 8h | 8h |
| 96 | 2 | QA cycle | 7d | 2008-07-14 | 2008-07-22 |  |  |  | 46d |  |  |  |  |  |
| 97 | 3 | Release Activity | 2d | 2008-07-14 | 2008-07-15 |  |  |  | 51d |  |  |  |  |  |
| 98 | 4 | **Future Releases** | 32d? | 2008-07-14 A | 2008-08-27 |  | 3% | 30.96d? | 30d |  |  |  | 32h | 32h |
| 99 | 4.1 | **Representing grid user in caB2B** | 22d? | 2008-07-14 A | 2008-08-12 |  | 67% | 7.33d? | 30d | 0d |  |  | 32h | 32h |
| 100 | 4.1.1 | Investigating APIs needed | 4d | 2008-08-07 A | 2008-08-12 A |  | 100% |  |  |  |  | Lalit Chand | 32h | 32h |
| 101 | 4.1.2 | Design to store user identity locally | 1d? | 2008-07-14 | 2008-07-14 |  |  |  | 51d |  |  |  |  |  |
| 102 | 4.1.3 | Design review by external parties | 1d? | 2008-07-14 | 2008-07-14 |  |  |  | 51d |  |  |  |  |  |
| 103 | 4.2 | Expansion of categories | 1d? | 2008-07-14 | 2008-07-14 |  |  |  | 61d |  |  |  |  |  |

| ID | WBS | Task | Duration | Start | Finish | Predecessors | Total slack | Free slack |
| --- | --- | --- | --- | --- | --- | --- | --- | --- |
| 104 | 4.3 | **caB2B_Y3_002-User based experiments** | 5d? | 2008-08-13 | 2008-08-20 | 99 | 30d | 0d |
| 105 | 4.3.1 | Requirement | 1d? | 2008-08-13 | 2008-08-13 |  | 21d | 0d |
| 106 | 4.3.2 | Design | 1d? | 2008-08-14 | 2008-08-14 | 105 | 21d | 0d |
| 107 | 4.3.3 | **Implementation** | 3d? | 2008-08-18 | 2008-08-20 |  | 30d |  |
| 108 | 4.3.3.1 | Saving experiments on user basis | 1d? | 2008-08-18 | 2008-08-18 | 106 | 21d | 0d |
| 109 | 4.3.3.2 | Changes needed at client-server interface to pass user info | 1d? | 2008-08-19 | 2008-08-19 | 108 | 21d | 0d |
| 110 | 4.3.3.3 | Fetch and display experiments based on user | 1d? | 2008-08-20 | 2008-08-20 | 109 | 21d |  |
| 111 | 4.4 | **caB2B_Y3_003-User based saved queries** | 5d? | 2008-08-21 | 2008-08-27 |  | 30d |  |
| 112 | 4.4.1 | Requirement | 1d? | 2008-08-21 | 2008-08-21 | 104 | 21d | 0d |
| 113 | 4.4.2 | Design | 1d? | 2008-08-22 | 2008-08-22 | 112 | 21d | 0d |
| 114 | 4.4.3 | **Implementation** | 3d? | 2008-08-25 | 2008-08-27 |  | 30d |  |
| 115 | 4.4.3.1 | Saving queries on user basis | 1d? | 2008-08-25 | 2008-08-25 | 113 | 20d | 0d |
| 116 | 4.4.3.2 | Changes needed at client-server interface to pass user info | 1d? | 2008-08-26 | 2008-08-26 | 115 | 20d | 0d |
| 117 | 4.4.3.3 | Fetch and display experiments based on user | 1d? | 2008-08-27 | 2008-08-27 | 116 | 20d |  |
| 118 | 4.5 | **Schedular component + notification functionality** | 16d | 2008-07-14 | 2008-08-04 |  | 41d | 0d |
| 119 | 4.5.1 | **Schedular** | 7d | 2008-07-14 | 2008-07-22 |  | 40d |  |
| 120 | 4.5.1.1 | Investigate Component | 2d | 2008-07-14 | 2008-07-15 |  | 31d | 0d |
| 121 | 4.5.1.2 | Developing Prototype | 5d | 2008-07-16 | 2008-07-22 | 120 | 31d | 0d |
| 122 | 4.5.2 | **Notification** | 9d | 2008-07-23 | 2008-08-04 |  | 40d |  |
| 123 | 4.5.2.1 | UI mockup | 1d | 2008-07-23 | 2008-07-23 | 121 | 26d | 0d |
| 124 | 4.5.2.2 | UI implementation | 3d | 2008-07-24 | 2008-07-28 | 123 | 26d | 0d |
| 125 | 4.5.2.3 | Backend Implementation | 5d | 2008-07-29 | 2008-08-04 | 124 | 26d |  |
| 126 | 4.6 | **caB2B_Y3_004-Asynchronous execution of queries** | 5d? | 2008-08-05 | 2008-08-11 | 118 | 41d |  |
| 127 | 4.6.1 | Requirement | 1d? | 2008-08-05 | 2008-08-05 |  | 26d | 0d |
| 128 | 4.6.2 | Design | 1d? | 2008-08-06 | 2008-08-06 | 127 | 26d | 0d |

| ID | WBS | Task | Duration | Start | Finish | Predecessors | Total slack | Free slack | Constraint |
| --- | --- | --- | --- | --- | --- | --- | --- | --- | --- |
| 129 | 4.6.3 | **Implementation** | 3d? | 2008-08-07 | 2008-08-11 | 128 | 40d |  |  |
| 130 | 4.6.3.1 | Represent schedule | 1d? | 2008-08-07 | 2008-08-07 |  | 26d | 0d |  |
| 131 | 4.6.3.2 | Storing schedule and firing jobs | 1d? | 2008-08-08 | 2008-08-08 | 130 | 26d | 0d |  |
| 132 | 4.6.3.3 | Implementing job for query execution | 1d? | 2008-08-11 | 2008-08-11 | 131 | 26d |  |  |
| 133 | 4.7 | **caB2B_Y3_010-Support WS enumerations data services** | 1d? | 2008-07-14 | 2008-07-14 |  | 61d |  |  |
| 134 | 4.7.1 | Requirement | 1d? | 2008-07-14 | 2008-07-14 |  | 52d |  |  |
| 135 | 4.7.2 | **Investigation** | 1d? | 2008-07-14 | 2008-07-14 |  | 60d |  |  |
| 136 | 4.7.2.1 | Investigate Component | 1d? | 2008-07-14 | 2008-07-14 |  | 52d |  |  |
| 137 | 4.7.2.2 | Developing Prototype | 1d? | 2008-07-14 | 2008-07-14 |  | 52d |  |  |
| 138 | 4.7.3 | Design | 1d? | 2008-07-14 | 2008-07-14 |  | 52d |  |  |
| 139 | 4.7.4 | **Implementation** | 1d? | 2008-07-14 | 2008-07-14 |  | 60d |  |  |
| 140 | 4.7.4.1 | Separating out Implementation Deployment Unit | 1d? | 2008-07-14 | 2008-07-14 |  | 52d |  |  |
| 141 | 4.7.4.2 | Changes needed in Deployment Process | 1d? | 2008-07-14 | 2008-07-14 |  | 52d |  |  |
| 142 | 4.8 | **caB2B_Y3_012-Asynchronous of save data list** | 15d? | 2008-07-14 | 2008-08-01 |  | 47d |  |  |
| 143 | 4.8.1 | Requirement | 1d? | 2008-07-14 | 2008-07-14 |  | 52d |  |  |
| 144 | 4.8.2 | **Investigation** | 1d? | 2008-07-14 | 2008-07-14 |  | 60d |  |  |
| 145 | 4.8.2.1 | Investigate Component | 1d? | 2008-07-14 | 2008-07-14 |  | 52d |  |  |
| 146 | 4.8.2.2 | Developing Prototype | 1d? | 2008-07-14 | 2008-07-14 |  | 52d |  |  |
| 147 | 4.8.3 | Design | 1d? | 2008-07-14 | 2008-07-14 |  | 52d |  |  |
| 148 | 4.8.4 | **Implementation** | 15d? | 2008-07-14 | 2008-08-01 |  | 46d |  |  |
| 149 | 4.8.4.1 | Separating out Implementation Deployment Unit | 1d? | 2008-07-14 | 2008-07-14 |  | 52d |  |  |
| 150 | 4.8.4.2 | Changes needed in Deployment Process | 1d? | 2008-08-01 | 2008-08-01 |  | 38d |  | finish no earlier than 2008-08-01 |
| 151 | 4.9 | **caB2B_Y3_013-intermodel joins for a group like washU, NCICB , Intermodel joins with pair of service instances** | 1d? | 2008-07-14 | 2008-07-14 |  | 61d |  |  |
| 152 | 4.9.1 | Requirement | 1d? | 2008-07-14 | 2008-07-14 |  | 52d |  |  |

| ID | WBS | Task | Duration | Start | Finish | Total slack |
| --- | --- | --- | --- | --- | --- | --- |
| 153 | 4.9.2 | **Investigation** | 1d? | 2008-07-14 | 2008-07-14 | 60d |
| 154 | 4.9.2.1 | Investigate Component | 1d? | 2008-07-14 | 2008-07-14 | 52d |
| 155 | 4.9.2.2 | Developing Prototype | 1d? | 2008-07-14 | 2008-07-14 | 52d |
| 156 | 4.9.3 | Design | 1d? | 2008-07-14 | 2008-07-14 | 52d |
| 157 | 4.9.4 | **Implementation** | 1d? | 2008-07-14 | 2008-07-14 | 60d |
| 158 | 4.9.4.1 | Separating out Implementation Deployment Unit | 1d? | 2008-07-14 | 2008-07-14 | 52d |
| 159 | 4.9.4.2 | Changes needed in Deployment Process | 1d? | 2008-07-14 | 2008-07-14 | 52d |
| 160 | 4.10 | **caB2B_Y3_014-Experiments with multiple datalists, edit expr to add data list with way to re-query (more likely)** | 1d? | 2008-07-14 | 2008-07-14 | 61d |
| 161 | 4.10.1 | Requirement | 1d? | 2008-07-14 | 2008-07-14 | 52d |
| 162 | 4.10.2 | UI Mockups | 1d? | 2008-07-14 | 2008-07-14 | 52d |
| 163 | 4.10.3 | Design | 1d? | 2008-07-14 | 2008-07-14 | 52d |
| 164 | 4.10.4 | **Implementation** | 1d? | 2008-07-14 | 2008-07-14 | 60d |
| 165 | 4.10.4.1 | UI for data list viewer | 1d? | 2008-07-14 | 2008-07-14 | 52d |
| 166 | 4.10.4.2 | Changes needed in Experiment module | 1d? | 2008-07-14 | 2008-07-14 | 52d |
| 167 | 4.10.4.3 | backend support for multiple data list | 1d? | 2008-07-14 | 2008-07-14 | 52d |
| 168 | 4.11 | **caB2B_Y3_015-Support for getting probe data from caArray. For CEL files no need to bring data back to cab2b server, just get the URL and send it to analytical service** | 1d? | 2008-07-14 | 2008-07-14 | 61d |
| 169 | 4.11.1 | Requirement | 1d? | 2008-07-14 | 2008-07-14 | 52d |
| 170 | 4.11.2 | **Investigation** | 1d? | 2008-07-14 | 2008-07-14 | 60d |
| 171 | 4.11.2.1 | Investigate Component | 1d? | 2008-07-14 | 2008-07-14 | 52d |
| 172 | 4.11.2.2 | Developing Prototype | 1d? | 2008-07-14 | 2008-07-14 | 52d |
| 173 | 4.11.3 | Design | 1d? | 2008-07-14 | 2008-07-14 | 52d |
| 174 | 4.11.4 | **Implementation** | 1d? | 2008-07-14 | 2008-07-14 | 60d |
| 175 | 4.11.4.1 | Separating out Implementation Deployment Unit | 1d? | 2008-07-14 | 2008-07-14 | 52d |
| 176 | 4.11.4.2 | Changes needed in Deployment Process | 1d? | 2008-07-14 | 2008-07-14 | 52d |

| ID | WBS | Task | Duration | Start | Finish | Total slack |
| --- | --- | --- | --- | --- | --- | --- |
| 177 | 4.12 | **caB2B_Y3_016-Support basic analytical services (support for ICR services, if needed, do customizations)** | 1d? | 2008-07-14 | 2008-07-14 | 61d |
| 178 | 4.12.1 | Requirement | 1d? | 2008-07-14 | 2008-07-14 | 52d |
| 179 | 4.12.2 | **Investigation** | 1d? | 2008-07-14 | 2008-07-14 | 60d |
| 180 | 4.12.2.1 | Investigate Component | 1d? | 2008-07-14 | 2008-07-14 | 52d |
| 181 | 4.12.2.2 | Developing Prototype | 1d? | 2008-07-14 | 2008-07-14 | 52d |
| 182 | 4.12.3 | Design | 1d? | 2008-07-14 | 2008-07-14 | 52d |
| 183 | 4.12.4 | **Implementation** | 1d? | 2008-07-14 | 2008-07-14 | 60d |
| 184 | 4.12.4.1 | Separating out Implementation Deployment Unit | 1d? | 2008-07-14 | 2008-07-14 | 52d |
| 185 | 4.12.4.2 | Changes needed in Deployment Process | 1d? | 2008-07-14 | 2008-07-14 | 52d |
| 186 | 4.13 | **caB2B_Y3_017-Viewers for supported analytical services** | 1d? | 2008-07-14 | 2008-07-14 | 61d |
| 187 | 4.13.1 | Requirement | 1d? | 2008-07-14 | 2008-07-14 | 52d |
| 188 | 4.13.2 | **Investigation** | 1d? | 2008-07-14 | 2008-07-14 | 60d |
| 189 | 4.13.2.1 | Investigate Component | 1d? | 2008-07-14 | 2008-07-14 | 52d |
| 190 | 4.13.2.2 | Developing Prototype | 1d? | 2008-07-14 | 2008-07-14 | 52d |
| 191 | 4.13.3 | Design | 1d? | 2008-07-14 | 2008-07-14 | 52d |
| 192 | 4.13.4 | **Implementation** | 1d? | 2008-07-14 | 2008-07-14 | 60d |
| 193 | 4.13.4.1 | Separating out Implementation Deployment Unit | 1d? | 2008-07-14 | 2008-07-14 | 52d |
| 194 | 4.13.4.2 | Changes needed in Deployment Process | 1d? | 2008-07-14 | 2008-07-14 | 52d |
| 195 | 4.14 | **caB2B_Y3_018-Returning result of a federated query even if only one of the instances is failed** | 1d? | 2008-07-14 | 2008-07-14 | 61d |
| 196 | 4.14.1 | Requirement | 1d? | 2008-07-14 | 2008-07-14 | 52d |
| 197 | 4.14.2 | **Investigation** | 1d? | 2008-07-14 | 2008-07-14 | 60d |
| 198 | 4.14.2.1 | Investigate Component | 1d? | 2008-07-14 | 2008-07-14 | 52d |
| 199 | 4.14.2.2 | Developing Prototype | 1d? | 2008-07-14 | 2008-07-14 | 52d |
| 200 | 4.14.3 | Design | 1d? | 2008-07-14 | 2008-07-14 | 52d |

| ID | WBS | Task | Duration | Start | Finish | Total slack |
| --- | --- | --- | --- | --- | --- | --- |
| 201 | 4.14.4 | **Implementation** | 1d? | 2008-07-14 | 2008-07-14 | 60d |
| 202 | 4.14.4.1 | Separating out Implementation Deployment Unit | 1d? | 2008-07-14 | 2008-07-14 | 52d |
| 203 | 4.14.4.2 | Changes needed in Deployment Process | 1d? | 2008-07-14 | 2008-07-14 | 52d |
| 204 | 4.15 | **caB2B_Y3_019-Intermodel joins with multiple attributes** | 1d? | 2008-07-14 | 2008-07-14 | 61d |
| 205 | 4.15.1 | Requirement | 1d? | 2008-07-14 | 2008-07-14 | 52d |
| 206 | 4.15.2 | **Investigation** | 1d? | 2008-07-14 | 2008-07-14 | 60d |
| 207 | 4.15.2.1 | Investigate Component | 1d? | 2008-07-14 | 2008-07-14 | 52d |
| 208 | 4.15.2.2 | Developing Prototype | 1d? | 2008-07-14 | 2008-07-14 | 52d |
| 209 | 4.15.3 | Design | 1d? | 2008-07-14 | 2008-07-14 | 52d |
| 210 | 4.15.4 | **Implementation** | 1d? | 2008-07-14 | 2008-07-14 | 60d |
| 211 | 4.15.4.1 | Separating out Implementation Deployment Unit | 1d? | 2008-07-14 | 2008-07-14 | 52d |
| 212 | 4.15.4.2 | Changes needed in Deployment Process | 1d? | 2008-07-14 | 2008-07-14 | 52d |
| 213 | 4.16 | **Advanced result view** | 1d? | 2008-07-14 | 2008-07-14 | 61d |
| 214 | 4.16.1 | Understanding requirement | 1d? | 2008-07-14 | 2008-07-14 | 52d |
| 215 | 4.16.2 | UI mock ups | 1d? | 2008-07-14 | 2008-07-14 | 52d |
| 216 | 4.16.3 | Design | 1d? | 2008-07-14 | 2008-07-14 | 52d |
| 217 | 4.16.4 | **UI implementation** | 1d? | 2008-07-14 | 2008-07-14 | 60d |
| 218 | 4.16.4.1 | Changes on define result view(step 3 of wizard) | 1d? | 2008-07-14 | 2008-07-14 | 52d |
| 219 | 4.16.4.2 | Changes in the advanced view result | 1d? | 2008-07-14 | 2008-07-14 | 52d |
| 220 | 4.16.5 | **Backend implementation** | 1d? | 2008-07-14 | 2008-07-14 | 60d |
| 221 | 4.16.5.1 | query changes to get all the objects asked in the result view | 1d? | 2008-07-14 | 2008-07-14 | 52d |
| 222 | 4.16.5.2 | changes in datalist | 1d? | 2008-07-14 | 2008-07-14 | 52d |
| 223 | 4.17 | **QA cycle** | 1d? | 2008-07-14 | 2008-07-14 | 61d |
| 224 | 4.17.1 | Writing testcases for new functionalities | 1d? | 2008-07-14 | 2008-07-14 | 52d |
| 225 | 4.17.2 | Build 1 for QA | 1d? | 2008-07-14 | 2008-07-14 | 52d |
| 226 | 4.17.3 | Testing Build 1 | 1d? | 2008-07-14 | 2008-07-14 | 52d |
| 227 | 4.17.4 | Fix bugs reported in Build 1 | 1d? | 2008-07-14 | 2008-07-14 | 52d |
| 228 | 4.17.5 | Demo to washU users | 1d? | 2008-07-14 | 2008-07-14 | 52d |
| 229 | 4.17.6 | Build 2 for QA | 1d? | 2008-07-14 | 2008-07-14 | 52d |
| 230 | 4.17.7 | Testing of Build 2 (by QA + washU users) | 1d? | 2008-07-14 | 2008-07-14 | 52d |
| 231 | 4.17.8 | Regression Testing | 1d? | 2008-07-14 | 2008-07-14 | 52d |
| 232 | 4.17.9 | Fix bugs reported in (Build 2 + regression testing) | 1d? | 2008-07-14 | 2008-07-14 | 52d |

Notes:
- 213: Use case: User has created a query and now wants to add a new class without any limits, just to fetch this additional associated information. / For example, while finding the GBM specimens user wants to know under what collection protocol the samples were collected. / The result view should also be a more user friendly view where classes are represented in a tree like format.

| ID | WBS | Task | Duration | Start | Finish | Total slack |
| --- | --- | --- | --- | --- | --- | --- |
| 233 | 4.18 | **Release Candidate 1** | 1d? | 2008-07-14 | 2008-07-14 | 61d |
| 234 | 4.18.1 | Release to QA + washU users for accepatance | 1d? | 2008-07-14 | 2008-07-14 | 52d |
| 235 | 4.18.2 | Verification of fixed bugs | 1d? | 2008-07-14 | 2008-07-14 | 52d |
| 236 | 4.18.3 | UAT by QA + washU users | 1d? | 2008-07-14 | 2008-07-14 | 52d |
| 237 | 4.18.4 | UAT bug fixing | 1d? | 2008-07-14 | 2008-07-14 | 52d |
| 238 | 4.19 | **Release activities** | 1d? | 2008-07-14 | 2008-07-14 | 61d |
| 239 | 4.19.1 | Updating washU servers | 1d? | 2008-07-14 | 2008-07-14 | 52d |
| 240 | 4.19.2 | Updating G-forge | 1d? | 2008-07-14 | 2008-07-14 | 52d |
| 241 | 4.19.3 | Updating website (cab2b.wustl.edu) | 1d? | 2008-07-14 | 2008-07-14 | 52d |
| 242 | 4.19.4 | Updating caBIG Tools Page | 1d? | 2008-07-14 | 2008-07-14 | 52d |
| 243 | 4.20 | **Documentation** | 1d? | 2008-07-14 | 2008-07-14 | 61d |
| 244 | 4.20.1 | Admin end user manual | 1d? | 2008-07-14 | 2008-07-14 | 52d |
| 245 | 4.20.2 | Admin design document | 1d? | 2008-07-14 | 2008-07-14 | 52d |
| 246 | 4.20.3 | Update design document | 1d? | 2008-07-14 | 2008-07-14 | 52d |
| 247 | 4.20.4 | Update end user manual update | 1d? | 2008-07-14 | 2008-07-14 | 52d |
| 248 | 4.21 | **Documentation Review** | 1d? | 2008-07-14 | 2008-07-14 | 61d |
| 249 | 4.21.1 | Review by NCICB Leads | 1d? | 2008-07-14 | 2008-07-14 | 52d |
| 250 | 4.21.2 | D&T Review | 1d? | 2008-07-14 | 2008-07-14 | 52d |
| 251 | 4.22 | Final Documentation | 1d? | 2008-07-14 | 2008-07-14 | 61d |
